# Lịch sách dành cho trẻ em

Schedule from MS Project, 2012-04-09 to 2015-08-10, costs in $.
Lucerne Publishing

## Calendars

- Standard: Mon-Fri 08:00-12:00, 13:00-17:00; Sat-Sun off.

## Resources

| Resource | Group | Unit | Rate |
| --- | --- | --- | --- |
| Carole Poland | Editorial |  | 52.5 |
| Copyeditors | Editorial |  | 45 |
| Dan Jump | Design |  | 75.5 |
| Hany Morcos | Editorial |  | 38.75 |
| Jane Dow | Editorial |  | 63.25 |
| Jun Cao | Editorial |  | 42 |
| Luis Sousa | Design |  | 70 |
| Printing Service | Production |  |  |
| Travel | Other |  |  |
| Tad Orman | Other |  |  |
| Color Setting Services | Production |  |  |
| Bound galley proofs | Production | copies | 15 |
| Dương Nguyên |  |  |  |
| Công Đạt |  |  |  |
| Thành Việt |  |  |  |
| Anh Khôi |  |  |  |
| Chí Chương |  |  |  |
| Trường Thịnh |  |  |  |
| Kiệt Võ |  |  |  |

## Schedule

| ID | WBS | Task | Type | Duration | Start | Finish | Predecessors | Baseline start | Baseline finish | Baseline duration | Total slack | Constraint | Deadline | Resources | Work | Cost | Baseline cost | Editorial Focus |
| --- | --- | --- | --- | --- | --- | --- | --- | --- | --- | --- | --- | --- | --- | --- | --- | --- | --- | --- |
| 1 | 1 | **Họp nhân viên biên tập** |  | 60.12d | 2012-04-09 08:00 | 2012-07-02 09:00 |  | 2012-04-09 08:00 | 2012-07-02 09:00 | 60.12d | 810.38d |  |  |  | 45.5h | 2,223 | 2,223 |  |
| 2 | 1.1 | Họp nhân viên biên tập 1 |  | 1h | 2012-04-09 08:00 | 2012-04-09 09:00 |  | 2012-04-09 08:00 | 2012-04-09 09:00 | 1h | 870.38d | start no earlier than 2012-04-09 08:00 |  | Carole Poland; Jun Cao; Hany Morcos; Dan Jump [50%] | 3.5h | 171 | 171 |  |
| 3 | 1.2 | Họp nhân viên biên tập 2 |  | 1h | 2012-04-16 08:00 | 2012-04-16 09:00 |  | 2012-04-16 08:00 | 2012-04-16 09:00 | 1h | 865.38d | start no earlier than 2012-04-16 08:00 |  | Carole Poland; Jun Cao; Hany Morcos; Dan Jump [50%] | 3.5h | 171 | 171 |  |
| 4 | 1.3 | Họp nhân viên biên tập 3 |  | 1h | 2012-04-23 08:00 | 2012-04-23 09:00 |  | 2012-04-23 08:00 | 2012-04-23 09:00 | 1h | 860.38d | start no earlier than 2012-04-23 08:00 |  | Carole Poland; Jun Cao; Hany Morcos; Dan Jump [50%] | 3.5h | 171 | 171 |  |
| 5 | 1.4 | Họp nhân viên biên tập 4 |  | 1h | 2012-04-30 08:00 | 2012-04-30 09:00 |  | 2012-04-30 08:00 | 2012-04-30 09:00 | 1h | 855.38d | start no earlier than 2012-04-30 08:00 |  | Carole Poland; Jun Cao; Hany Morcos; Dan Jump [50%] | 3.5h | 171 | 171 |  |
| 6 | 1.5 | Họp nhân viên biên tập 5 |  | 1h | 2012-05-07 08:00 | 2012-05-07 09:00 |  | 2012-05-07 08:00 | 2012-05-07 09:00 | 1h | 850.38d | start no earlier than 2012-05-07 08:00 |  | Carole Poland; Jun Cao; Hany Morcos; Dan Jump [50%] | 3.5h | 171 | 171 |  |
| 7 | 1.6 | Họp nhân viên biên tập 6 |  | 1h | 2012-05-14 08:00 | 2012-05-14 09:00 |  | 2012-05-14 08:00 | 2012-05-14 09:00 | 1h | 845.38d | start no earlier than 2012-05-14 08:00 |  | Carole Poland; Jun Cao; Hany Morcos; Dan Jump [50%] | 3.5h | 171 | 171 |  |
| 8 | 1.7 | Họp nhân viên biên tập 7 |  | 1h | 2012-05-21 08:00 | 2012-05-21 09:00 |  | 2012-05-21 08:00 | 2012-05-21 09:00 | 1h | 840.38d | start no earlier than 2012-05-21 08:00 |  | Carole Poland; Jun Cao; Hany Morcos; Dan Jump [50%] | 3.5h | 171 | 171 |  |
| 9 | 1.8 | Họp nhân viên biên tập 8 |  | 1h | 2012-05-28 08:00 | 2012-05-28 09:00 |  | 2012-05-28 08:00 | 2012-05-28 09:00 | 1h | 835.38d | start no earlier than 2012-05-28 08:00 |  | Carole Poland; Jun Cao; Hany Morcos; Dan Jump [50%] | 3.5h | 171 | 171 |  |
| 10 | 1.9 | Họp nhân viên biên tập 9 |  | 1h | 2012-06-04 08:00 | 2012-06-04 09:00 |  | 2012-06-04 08:00 | 2012-06-04 09:00 | 1h | 830.38d | start no earlier than 2012-06-04 08:00 |  | Carole Poland; Jun Cao; Hany Morcos; Dan Jump [50%] | 3.5h | 171 | 171 |  |
| 11 | 1.10 | Họp nhân viên biên tập 10 |  | 1h | 2012-06-11 08:00 | 2012-06-11 09:00 |  | 2012-06-11 08:00 | 2012-06-11 09:00 | 1h | 825.38d | start no earlier than 2012-06-11 08:00 |  | Carole Poland; Jun Cao; Hany Morcos; Dan Jump [50%] | 3.5h | 171 | 171 |  |
| 12 | 1.11 | Họp nhân viên biên tập 11 |  | 1h | 2012-06-18 08:00 | 2012-06-18 09:00 |  | 2012-06-18 08:00 | 2012-06-18 09:00 | 1h | 820.38d | start no earlier than 2012-06-18 08:00 |  | Carole Poland; Jun Cao; Hany Morcos; Dan Jump [50%] | 3.5h | 171 | 171 |  |
| 13 | 1.12 | Họp nhân viên biên tập 12 |  | 1h | 2012-06-25 08:00 | 2012-06-25 09:00 |  | 2012-06-25 08:00 | 2012-06-25 09:00 | 1h | 815.38d | start no earlier than 2012-06-25 08:00 |  | Carole Poland; Jun Cao; Hany Morcos; Dan Jump [50%] | 3.5h | 171 | 171 |  |
| 14 | 1.13 | Họp nhân viên biên tập 13 |  | 1h | 2012-07-02 08:00 | 2012-07-02 09:00 |  | 2012-07-02 08:00 | 2012-07-02 09:00 | 1h | 810.38d | start no earlier than 2012-07-02 08:00 |  | Carole Poland; Jun Cao; Hany Morcos; Dan Jump [50%] | 3.5h | 171 | 171 |  |
| 15 | 2 | **Sự tiếp nhận** |  | 35.25d | 2015-04-06 08:00 | 2015-05-25 10:00 |  | 2015-04-06 08:00 | 2015-05-25 10:00 | 35.25d | 0d |  |  |  | 476h |  |  |  |
| 16 | 2.1 | Nhận bản thảo | milestone | 0d | 2015-04-06 08:00 | 2015-04-06 08:00 |  | 2015-04-06 08:00 | 2015-04-06 08:00 | 0d | 0d |  |  |  |  |  |  |  |
| 17 | 2.2 | Biên tập nội dung |  | 15d | 2015-04-06 08:00 | 2015-04-29 17:00 | 16 | 2015-04-06 08:00 | 2015-04-29 17:00 | 15d | 0d |  |  | Dương Nguyên | 120h |  |  | Full developmental edit |
| 18 | 2.3 | Đánh giá tác phẩm gốc |  | 10.25d | 2015-04-23 08:00 | 2015-05-07 10:00 | 17FS-5d | 2015-04-23 08:00 | 2015-05-07 10:00 | 10.25d | 0d |  |  | Công Đạt; Thành Việt | 164h |  |  |  |
| 19 | 2.4 | Đánh giá của tác giả về nội dung biên tập |  | 12d | 2015-05-07 10:00 | 2015-05-25 10:00 | 17, 18 | 2015-05-07 10:00 | 2015-05-25 10:00 | 12d | 0d |  |  | Anh Khôi; Chí Chương | 192h |  |  | Incorp must-fix issues |
| 20 | 2.5 | Bàn giao cho bộ phân biên tập | milestone | 0d | 2015-05-25 10:00 | 2015-05-25 10:00 | 19 | 2015-05-25 10:00 | 2015-05-25 10:00 | 0d | 0d |  | 2015-05-29 17:00 | Trường Thịnh |  |  |  |  |
| 21 | 3 | **Biên tập** |  | 40.25d | 2015-05-25 10:00 | 2015-07-20 12:00 | 15 | 2015-05-25 10:00 | 2015-07-20 12:00 | 40.25d | 0d |  |  |  | 401h |  |  |  |
| 22 | 3.1 | Sắp xếp bản thảo cho bản sao |  | 5.12d | 2015-05-25 10:00 | 2015-06-01 11:00 |  | 2015-05-25 10:00 | 2015-06-01 11:00 | 5.12d | 0d |  |  | Kiệt Võ [50%]; Công Đạt | 61h |  |  | Address outstanding line edit issues |
| 23 | 3.2 | Bản sao |  | 22.5d | 2015-06-01 11:00 | 2015-07-01 16:00 | 22 | 2015-06-01 11:00 | 2015-07-01 16:00 | 22.5d | 0d |  |  | Chí Chương | 180h |  |  | Style Guide compliance |
| 24 | 3.3 | Đánh giá của tác giả về bản sao |  | 10d | 2015-07-01 16:00 | 2015-07-15 16:00 | 23 | 2015-07-01 16:00 | 2015-07-15 16:00 | 10d | 0d |  |  | Anh Khôi; Chí Chương [25%] | 100h |  |  | Incorp must-fix issues |
| 25 | 3.4 | Kếp hợp bản sao |  | 5.12d | 2015-07-13 11:00 | 2015-07-20 12:00 | 24FS-2.5% | 2015-07-13 11:00 | 2015-07-20 12:00 | 5.12d | 0d |  |  | Dương Nguyên; Kiệt Võ [50%] | 60h |  |  | Incorp must-fix issues |
| 26 | 3.5 | Công Đạt | milestone | 0d | 2015-07-20 12:00 | 2015-07-20 12:00 | 25 | 2015-07-20 12:00 | 2015-07-20 12:00 | 0d | 0d |  |  | Hany Morcos |  |  |  |  |

| ID | WBS | Task | Duration | Start | Finish | Predecessors | Baseline start | Baseline finish | Baseline duration | Total slack | Resources | Work |
| --- | --- | --- | --- | --- | --- | --- | --- | --- | --- | --- | --- | --- |
| 27 | 4 | **Thiết kế và Sản xuất** | 15d | 2015-07-20 13:00 | 2015-08-10 12:00 | 21 | 2015-07-20 13:00 | 2015-08-10 12:00 | 15d | 0d |  | 120h |
| 28 | 4.1 | Thiết lập trang | 15d | 2015-07-20 13:00 | 2015-08-10 12:00 |  | 2015-07-20 13:00 | 2015-08-10 12:00 | 15d | 0d | Thành Việt | 120h |
